# Diplôme - SLO - Santos

Schedule from GanttProject, 2023-08-21 to 2023-10-06, baseline: 2312_Initial.
ETML-ES
Travail de diplôme SLO / Miguel Santos / 2023

## Calendars

- Project calendar: Mon-Fri working; Sat-Sun off. Exceptions (off unless hours are given): 2023-09-18 (Jeûne Fédéral).

## Resources

| Resource | Group | Rate |
| --- | --- | --- |
| Miguel Santos |  | 35 |
| Serge Castoldi | Maître de diplôme |  |

## Schedule

| ID | WBS | Task | Type | Duration | Start | Finish | Predecessors | Complete | Baseline start | Baseline finish | Baseline duration | Constraint | Resources | Cost |
| --- | --- | --- | --- | --- | --- | --- | --- | --- | --- | --- | --- | --- | --- | --- |
| 1 | 1 | **Travail de diplôme** |  | 34d | 2023-08-21 | 2023-10-06 |  | 3% | 2023-08-21 | 2023-10-06 | 34d |  |  |  |
| 2 | 1.1 | Pré-étude |  | 3d | 2023-08-21 | 2023-08-23 |  | 80% | 2023-08-21 | 2023-08-23 | 3d |  | Miguel Santos |  |
| 3 | 1.2 | Schémas |  | 2d | 2023-08-24 | 2023-08-25 | 2 |  | 2023-08-24 | 2023-08-25 | 2d |  | Miguel Santos |  |
| 4 | 1.3 | Revue de schémas | milestone | 0d | 2023-08-28 | 2023-08-28 | 3 |  | 2023-08-28 | 2023-08-28 | 0d |  | Miguel Santos |  |
| 5 | 1.4 | Commandes composants |  | 1d | 2023-08-28 | 2023-08-28 | 4 |  | 2023-08-28 | 2023-08-28 | 1d |  | Miguel Santos | 35 |
| 6 | 1.5 | PCB |  | 4d | 2023-08-29 | 2023-09-01 | 5 |  | 2023-08-29 | 2023-09-01 | 4d |  | Miguel Santos |  |
| 7 | 1.6 | Revue PCB | milestone | 0d | 2023-09-04 | 2023-09-04 | 6 |  | 2023-09-04 | 2023-09-04 | 0d |  |  |  |
| 8 | 1.7 | Commande PCB | milestone | 0d | 2023-09-04 | 2023-09-04 | 7 |  | 2023-09-04 | 2023-09-04 | 0d |  | Miguel Santos |  |
| 9 | 1.8 | Montage & tests |  | 2d | 2023-09-13 | 2023-09-14 | 5, 8FS+7d |  | 2023-09-13 | 2023-09-14 | 2d |  | Miguel Santos |  |
| 10 | 1.9 | Modélisation 3D |  | 2d | 2023-09-04 | 2023-09-05 | 8 |  | 2023-09-04 | 2023-09-05 | 2d |  | Miguel Santos | 35 |
| 11 | 1.10 | Software RPI |  | 5d | 2023-09-06 | 2023-09-12 | 10 |  | 2023-09-06 | 2023-09-12 | 5d |  |  |  |
| 12 | 1.11 | Firmware PCB |  | 5d | 2023-09-15 | 2023-09-22 | 9, 11 |  | 2023-09-15 | 2023-09-22 | 5d |  | Miguel Santos |  |
| 13 | 1.12 | Mise en service |  | 7d | 2023-09-25 | 2023-10-03 | 12 |  | 2023-09-25 | 2023-10-03 | 7d |  | Miguel Santos |  |
| 14 | 1.13 | Documents |  | 31d | 2023-08-21 | 2023-10-03 |  |  | 2023-08-21 | 2023-10-03 | 31d |  | Miguel Santos |  |
| 15 | 1.14 | Remise des mémoires | milestone | 0d | 2023-09-26 | 2023-09-26 |  |  | 2023-09-26 | 2023-09-26 | 0d |  | Miguel Santos |  |
| 16 | 1.15 | Remise affiche et résumé | milestone | 0d | 2023-09-27 | 2023-09-27 |  |  | 2023-09-27 | 2023-09-27 | 0d |  | Miguel Santos |  |
| 17 | 1.16 | Portes ouvertes | milestone | 0d | 2023-09-29 | 2023-09-29 |  |  | 2023-09-29 | 2023-09-29 | 0d |  | Miguel Santos |  |
| 18 | 1.17 | Défense orale |  | 3d | 2023-10-04 | 2023-10-06 | 13 |  | 2023-10-04 | 2023-10-06 | 3d | start no earlier than 2023-10-04 | Miguel Santos |  |
